# BOL_MB02_Raspored_aktivnosti

Schedule from MS Project, 2024-10-24 to 2025-01-30.

## Calendars

- Standard: Mon-Fri 08:00-12:00, 13:00-17:00; Sat-Sun off. Exceptions (off unless hours are given): 2024-10-26 08:00-12:00, 13:00-17:00, 2024-11-10 08:00-12:00, 13:00-17:00, 2024-11-16 08:00-12:00, 13:00-17:00, 2024-12-01 08:00-12:00, 13:00-17:00, 2024-12-07 to 2024-12-08 08:00-12:00, 13:00-17:00, 2024-12-14 to 2024-12-15 08:00-12:00, 13:00-17:00, 2024-12-29 08:00-12:00, 13:00-17:00, 2025-01-04 to 2025-01-05 08:00-12:00, 13:00-17:00, 2025-01-12 08:00-12:00, 13:00-17:00.

## Resources

| Resource |
| --- |
| Ajša Tahirović |
| Aldina Avdić |

## Schedule

| ID | WBS | Task | Type | Duration | Start | Finish | Predecessors | Total slack | Free slack | Constraint | Resources | Work |
| --- | --- | --- | --- | --- | --- | --- | --- | --- | --- | --- | --- | --- |
| 1 | 1 | **Očekivani rezultati** |  | 83d | 2024-10-24 | 2025-01-30 |  | 0d |  |  | Ajša Tahirović | 664h |
| 2 | 1.1 | Početak projekta | milestone | 0d | 2024-10-24 | 2024-10-24 | 16SS | 77d |  |  | Aldina Avdić |  |
| 3 | 1.2 | Vizija sistema | milestone | 0d | 2024-10-30 | 2024-10-30 | 19 | 77d |  | start no earlier than 2024-10-30 | Ajša Tahirović |  |
| 4 | 1.3 | Dokument o zahtevima | milestone | 0d | 2024-11-13 | 2024-11-13 | 25 | 66d |  | start no earlier than 2024-11-13 | Ajša Tahirović |  |
| 5 | 1.4 | Arhitekturni prototip | milestone | 0d | 2024-11-18 | 2024-11-18 | 26 | 62d |  | start no earlier than 2024-11-16 | Ajša Tahirović |  |
| 6 | 1.5 | Prototip korisničkog interfejsa | milestone | 0d | 2024-11-20 | 2024-11-20 | 28 | 60d |  | start no earlier than 2024-11-20 | Ajša Tahirović |  |
| 7 | 1.6 | Arhitekturni projekat | milestone | 0d | 2024-11-27 | 2024-11-27 | 29 | 49d |  | start no earlier than 2024-11-27 | Aldina Avdić |  |
| 8 | 1.7 | Detaljni projekat | milestone | 0d | 2024-12-14 | 2024-12-14 | 33 | 40d |  | start no earlier than 2024-12-14 | Ajša Tahirović |  |
| 9 | 1.8 | Beta verzija | milestone | 0d | 2024-12-18 | 2024-12-18 | 34 | 36d |  | start no earlier than 2024-12-18 | Ajša Tahirović |  |
| 10 | 1.9 | Plan testiranja | milestone | 0d | 2024-12-25 | 2024-12-25 | 35 | 31d |  | start no earlier than 2024-12-25 | Ajša Tahirović |  |
| 11 | 1.10 | Izveštaj o testiranju | milestone | 0d | 2024-12-30 | 2024-12-30 | 41 | 26d |  | start no earlier than 2024-12-25 | Ajša Tahirović |  |
| 12 | 1.11 | Konačna verzija | milestone | 0d | 2024-12-30 | 2024-12-30 | 38 | 26d |  |  | Ajša Tahirović |  |
| 13 | 1.12 | Korisničko uputstvo | milestone | 0d | 2025-01-15 | 2025-01-15 | 46 | 11d |  | start no earlier than 2025-01-04 | Ajša Tahirović |  |
| 14 | 1.13 | Prezentacija proizvoda | milestone | 0d | 2025-01-30 | 2025-01-30 | 44 | 0d |  | start no earlier than 2025-01-09 | Ajša Tahirović |  |
| 16 | 2 | **Faza planiranja projekta** |  | 12d | 2024-10-24 | 2024-11-07 |  | 12d | 0d |  | Aldina Avdić | 288h |
| 17 | 2.1 | **Nejla Tobdžiu** |  | 12d | 2024-10-24 | 2024-11-07 |  | 12d |  |  | Ajša Tahirović | 192h |
| 18 | 2.1.1 | Definisanje zahteva |  | 3d | 2024-10-24 | 2024-10-26 |  | 12d | 0d | start no earlier than 2024-10-24 | Ajša Tahirović | 24h |
| 19 | 2.1.2 | Izrada vizije sistema |  | 3d | 2024-10-28 | 2024-10-30 | 18 | 12d | 0d | finish no earlier than 2024-10-30 | Ajša Tahirović | 24h |
| 20 | 2.1.3 | Modelovanje domena |  | 2d | 2024-10-31 | 2024-11-01 | 19 | 12d | 0d | start no earlier than 2024-10-31 | Ajša Tahirović | 16h |
| 21 | 2.1.4 | Analiza slučajeva korišćenja |  | 4d | 2024-11-04 | 2024-11-07 | 20 | 12d |  | finish no earlier than 2024-11-06 | Ajša Tahirović | 32h |
| 23 | 3 | **Faza razrade projekta** |  | 16d | 2024-11-08 | 2024-11-27 | 16 | 8d | 1d |  | Ajša Tahirović | 392h |
| 24 | 3.1 | **Iteracija R1 - Razvoj arhitekturnog prototipa** |  | 16d | 2024-11-08 | 2024-11-27 |  | 8d |  |  | Ajša Tahirović | 264h |
| 25 | 3.1.1 | Izrada dokumenta o zahtevima |  | 5d | 2024-11-08 | 2024-11-13 |  | 19d | 0d | finish no earlier than 2024-11-13 | Ajša Tahirović | 40h |
| 26 | 3.1.2 | Implementacija arhitekturnog prototipa |  | 9d | 2024-11-08 | 2024-11-18 |  | 12d | 0d | finish no earlier than 2024-11-16 | Ajša Tahirović | 72h |
| 27 | 3.1.3 | Testiranje arhitekture |  | 1d | 2024-11-19 | 2024-11-19 | 26 | 12d | 0d | start no earlier than 2024-11-17 | Ajša Tahirović | 8h |
| 28 | 3.1.4 | Implementacija prototipa korisničkog interfejsa |  | 1d | 2024-11-20 | 2024-11-20 | 27 | 12d | 0d | finish no earlier than 2024-11-20 | Ajša Tahirović | 8h |
| 29 | 3.1.5 | Izrada arhitekturnog projekta |  | 1d | 2024-11-27 | 2024-11-27 | 28 | 8d | 0d | finish no earlier than 2024-11-27 | Ajša Tahirović | 8h |

| ID | WBS | Task | Type | Duration | Start | Finish | Predecessors | Total slack | Free slack | Constraint | Resources | Work |
| --- | --- | --- | --- | --- | --- | --- | --- | --- | --- | --- | --- | --- |
| 31 | 4 | **Faza izrade projekta** |  | 28d | 2024-11-29 | 2024-12-30 | 23 | 0d |  |  | Ajša Tahirović | 696h |
| 32 | 4.1 | **Iteracija I1 - Razvoj beta verzije** |  | 21d | 2024-11-29 | 2024-12-20 |  | 3d |  |  | Ajša Tahirović | 400h |
| 33 | 4.1.1 | Izrada detaljnog projekta |  | 12d | 2024-11-29 | 2024-12-11 |  | 12d | 2d | finish no earlier than 2024-12-11 | Ajša Tahirović | 96h |
| 34 | 4.1.2 | Implementacija beta verzije |  | 15d | 2024-11-29 | 2024-12-14 |  | 7d | 3d | finish no earlier than 2024-12-14 | Ajša Tahirović | 120h |
| 35 | 4.1.3 | Izrada plana testiranja | milestone | 0d | 2024-12-18 | 2024-12-18 | 34 | 3d | 0d | finish no earlier than 2024-12-18 | Ajša Tahirović |  |
| 36 | 4.1.4 | Testiranje sistema | milestone | 0d | 2024-12-20 | 2024-12-20 | 35 | 3d |  | finish no earlier than 2024-12-20 | Ajša Tahirović |  |
| 37 | 4.1.5 | Izrada izveštaja o testiranju |  | 2d | 2024-12-19 | 2024-12-20 | 35 | 3d |  | finish no earlier than 2024-12-20 | Ajša Tahirović | 16h |
| 38 | 4.2 | **Iteracija I2 - Razvoj konačne verzije** |  | 4d | 2024-12-26 | 2024-12-30 | 32 | 0d |  |  | Ajša Tahirović | 72h |
| 39 | 4.2.1 | Implementacija konačne verzije |  | 3d | 2024-12-26 | 2024-12-29 |  | 0d |  | finish no earlier than 2024-12-29 | Ajša Tahirović | 24h |
| 40 | 4.2.2 | Testiranje konačne verzije |  | 1d | 2024-12-30 | 2024-12-30 | 39 | 0d |  |  | Ajša Tahirović | 8h |
| 41 | 4.2.3 | Ažuriranje izveštaja o testiranju |  | 1d | 2024-12-30 | 2024-12-30 | 39 | 0d |  | start no earlier than 2024-12-30 | Ajša Tahirović | 8h |
| 43 | 5 | **Faza okončanja projekta** |  | 26d | 2024-12-31 | 2025-01-30 | 38 | 0d |  |  | Ajša Tahirović | 624h |
| 44 | 5.1 | **Iteracija O1 - Instalacija sistema** |  | 26d | 2024-12-31 | 2025-01-30 |  | 0d |  |  | Ajša Tahirović | 416h |
| 45 | 5.1.1 | Sređivanje projektne dokumentacije |  | 10d | 2024-12-31 | 2025-01-09 |  | 0d |  | finish no earlier than 2024-12-29 | Ajša Tahirović | 80h |
| 46 | 5.1.2 | Izrada korisničkog uputstva |  | 5d | 2025-01-10 | 2025-01-15 | 45 | 0d |  | finish no earlier than 2025-01-06 | Ajša Tahirović | 40h |
| 47 | 5.1.3 | Instalacija sistema |  | 11d | 2025-01-16 | 2025-01-30 | 46 | 0d |  | finish no earlier than 2025-01-22 | Ajša Tahirović | 88h |
